# Project Woodland

Schedule from MS Project, 2021-02-01 to 2022-06-03, status date 2021-01-01, costs in €.

## Calendars

- Standard: Mon-Fri 08:00-12:00, 13:00-17:00; Sat-Sun off.

## Resources

| Resource | Rate |
| --- | --- |
| DAFM | 50 |
| Wg 4 | 40 |
| Wg 3 | 40 |
| Wg 1 | 40 |
| Wg 2 | 40 |
| Consulenti Esterni | 50 |
| Business Analyst | 50 |
| Project Board | 70 |
| Project Manager |  |
| Sponsor (o chi ne fa veci) |  |

## Schedule

| ID | WBS | Task | Type | Duration | Start | Finish | Predecessors | Total slack | Free slack | Resources | Work | Cost | Target |
| --- | --- | --- | --- | --- | --- | --- | --- | --- | --- | --- | --- | --- | --- |
| 1 | 1 | Istituzione del Project Board e Work Group |  | 2w | 2021-02-01 | 2021-02-12 |  | 0d |  | DAFM [1000%] | 800h | 40,000 | feb-21 |
| 2 | 2 | Project Board e Work Group istituiti | milestone | 0w | 2021-02-12 | 2021-02-12 | 1 | 340d |  |  |  |  |  |
| 3 | 3 | **Gara d'Appalto per Nomina Consulenti Legali Esterni** |  | 25d | 2021-02-15 | 2021-03-19 |  | 10d |  |  | 480h | 33,600 | Inizio Febbraio 2022 |
| 4 | 3.1 | Elaborazione e Pubblicazione Bando di Gara |  | 1w | 2021-02-15 | 2021-02-19 | 1 | 10d | 0d | Project Board [600%] | 240h | 16,800 |  |
| 5 | 3.2 | Valutazione Candidati e Nomina Assegnatari |  | 1w | 2021-03-15 | 2021-03-19 | 4FS+3w | 10d | 0d | Project Board [600%] | 240h | 16,800 |  |
| 6 | 3.3 | Procedura di gara per assunzione consulenti completata | milestone | 0w | 2021-03-19 | 2021-03-19 | 5 | 315d |  |  |  |  |  |
| 7 | 4 | **Analisi Preliminari** |  | 45d | 2021-02-01 | 2021-04-02 |  | 0d |  |  | 4480h | 193,600 |  |
| 8 | 4.1 | Studio di fattibilità |  | 4w | 2021-02-01 | 2021-02-26 | 1SS | 0d |  | Wg 4 [1000%] | 1600h | 64,000 | Marzo aprile 2021 |
| 9 | 4.2 | Analisi costi-benefici |  | 3w | 2021-03-01 | 2021-03-19 | 8 | 10d | 0d | Wg 4 [1000%] | 1200h | 48,000 | Marzo aprile 2021 |
| 10 | 4.3 | Analisi preliminari svolte | milestone | 0w | 2021-03-19 | 2021-03-19 | 9 | 315d |  |  |  |  |  |
| 11 | 4.4 | **Definizione KPI Target** |  | 25d | 2021-03-01 | 2021-04-02 |  | 300d |  |  | 1680h | 81,600 | apr-21 |
| 12 | 4.4.1 | Identificazione KPI |  | 3w | 2021-03-01 | 2021-03-19 | 9SS | 300d | 0d | Wg 3 [1000%] | 1200h | 48,000 | apr-21 |
| 13 | 4.4.2 | Analisi KPI |  | 2w | 2021-03-22 | 2021-04-02 | 12 | 300d | 0d | Project Board [600%] | 480h | 33,600 | apr-21 |
| 14 | 4.4.3 | KPI congelati | milestone | 0w | 2021-04-02 | 2021-04-02 | 13 | 305d |  |  |  |  |  |
| 15 | 5 | **Analisi/Revisione processo** |  | 100d | 2021-03-22 | 2021-08-06 |  | 10d |  |  | 9400h | 394,000 | Giugno - luglio 2021 |
| 16 | 5.1 | Analisi del processo di gestione delle licenze dal punto di vista legale |  | 11w | 2021-03-22 | 2021-06-04 | 9, 5 | 10d | 0d | Wg 4 [500%]; Consulenti Esterni; Business Analyst [50%] | 2860h | 121,000 |  |
| 17 | 5.2 | Analisi del processo di gestione delle licenze dal punto di vista organizzativo |  | 9w | 2021-03-22 | 2021-05-21 | 16SS, 5 | 20d | 10d | Wg 4 [500%]; Business Analyst [50%]; Consulenti Esterni | 2340h | 99,000 |  |
| 18 | 5.3 | Revisione del processo di gestione delle licenze |  | 6w | 2021-06-07 | 2021-07-16 | 16, 17 | 10d | 0d | Wg 4 [1000%]; Wg 1 [500%]; Business Analyst; Consulenti Esterni | 4080h | 168,000 |  |
| 19 | 5.4 | Elaborazione rapporto finale di revisione normativa |  | 3w | 2021-07-19 | 2021-08-06 | 16, 18 | 20d | 0d | Consulenti Esterni | 120h | 6,000 |  |
| 20 | 5.5 | Processo di gestione delle licenze revisionato | milestone | 0w | 2021-08-06 | 2021-08-06 | 19 | 215d |  |  |  |  |  |
| 21 | 6 | **Gestione dell’arretrato** |  | 85d | 2021-03-29 | 2021-07-23 |  | 20d |  |  | 3720h | 148,800 |  |
| 22 | 6.1 | Ricerca per definire standard di “Backlog” |  | 2w | 2021-03-29 | 2021-04-09 | 9FS+1w | 20d | 0d | Wg 1 [900%] | 720h | 28,800 | lug-21 |
| 23 | 6.2 | Definizione di backlog pubblicata | milestone | 0w | 2021-04-09 | 2021-04-09 | 22 | 300d |  |  |  |  |  |
| 24 | 6.3 | Classificazione tipologie di arretrato (es. richieste numerose, richieste lontane nel tempo) |  | 3w | 2021-04-12 | 2021-04-30 | 22 | 20d | 0d | Wg 1 [900%] | 1080h | 43,200 |  |
| 25 | 6.4 | Definizione Procedura per ridurre l’arretrato |  | 12w | 2021-05-03 | 2021-07-23 | 24 | 20d | 0d | Wg 1 [400%] | 1920h | 76,800 | ago-21 |
| 26 | 6.5 | Procedura di riduzione dell'arretrato identificata | milestone | 0w | 2021-07-23 | 2021-07-23 | 25 | 225d |  |  |  |  |  |

| ID | WBS | Task | Type | Duration | Start | Finish | Predecessors | Total slack | Free slack | Resources | Work | Cost | Target |
| --- | --- | --- | --- | --- | --- | --- | --- | --- | --- | --- | --- | --- | --- |
| 27 | 7 | **Comunicazione e Promozione** |  | 45d | 2021-02-15 | 2021-04-16 |  | 0d |  |  | 3000h | 120,000 | Settembre 2021 |
| 28 | 7.1 | Creazione del registro stakeholders (tecniche di aggiornamento automatiche) |  | 5w | 2021-02-15 | 2021-03-19 | 8SS+2w | 0d |  | Wg 2 [1100%] | 2200h | 88,000 |  |
| 29 | 7.2 | Elaborare strategie ad hoc per informare i vari stakeholders |  | 4w | 2021-03-22 | 2021-04-16 | 28 | 160d | 0d | Wg 2 [500%] | 800h | 32,000 |  |
| 30 | 7.3 | Strategia di comunicazione e promozione redatta | milestone | 0w | 2021-04-16 | 2021-04-16 | 29 | 295d |  |  |  |  |  |
| 31 | 8 | **Aggiornamento** |  | 55d | 2021-07-19 | 2021-10-01 |  | 10d |  |  | 2920h | 116,800 | set-21 |
| 32 | 8.1 | Sviluppo nuovo standard forestale irlandese |  | 5w | 2021-07-19 | 2021-08-20 | 25FS-3w, 18 | 10d | 0d | Wg 2 [500%] | 1000h | 40,000 |  |
| 33 | 8.2 | Standard forestale inglese aggiornato | milestone | 0w | 2021-08-20 | 2021-08-20 | 32 | 205d |  |  |  |  |  |
| 34 | 8.3 | Programma di previsione |  | 3w | 2021-08-23 | 2021-09-10 | 32 | 95d | 0d | Wg 2 [1100%] | 1320h | 52,800 |  |
| 35 | 8.4 | Registro stakeholders e vari documenti associati al progetto |  | 3w | 2021-09-13 | 2021-10-01 | 34 | 95d | 0d | Wg 2 [500%] | 600h | 24,000 |  |
| 36 | 8.5 | Programma di previsione aggiornato | milestone | 0w | 2021-10-01 | 2021-10-01 | 35 | 175d |  |  |  |  |  |
| 37 | 9 | **Valutazione Atteggiamento Stakeholders sulla politica forestale** |  | 95d | 2021-03-22 | 2021-07-30 |  | 0d |  |  | 6160h | 246,400 | dic-21 |
| 38 | 9.1 | Elaborazione di questionari |  | 5w | 2021-03-22 | 2021-04-23 | 28 | 0d |  | Wg 2 [600%] | 1200h | 48,000 |  |
| 39 | 9.2 | Somministrazione questionari per indagine nazionale sull’atteggiamento del grande pubblico nei confronti di alberi, boschi e foreste |  | 8w | 2021-04-26 | 2021-06-18 | 38 | 0d |  | Wg 2 [1100%] | 3520h | 140,800 | Settembre/Ottobre 2021 |
| 40 | 9.3 | Valutazione delle criticità attraverso il Forum Giovani |  | 6w | 2021-06-21 | 2021-07-30 | 39 | 0d |  | Wg 2 [600%] | 1440h | 57,600 | Settembre/Ottobre 2021 |
| 41 | 9.4 | Indagine nazionale sull’atteggiamento del grande pubblico (nei confronti di alberi, boschi e foreste) completata | milestone | 0w | 2021-07-30 | 2021-07-30 | 40 | 220d |  |  |  |  |  |
| 42 | 10 | Revisione dei sistemi impiegati da DAFM nell’elaborazione/valutazione dei documenti |  | 5w | 2021-07-30 | 2021-09-03 | 32SS, 40 | 0d |  | Wg 3 [500%]; Wg 2 [1100%] | 1000h | 40,000 | ott-21 |
| 43 | 11 | **Formazione Interna** |  | 75d | 2021-10-11 | 2022-01-21 |  | 95d |  |  | 2800h | 112,000 |  |
| 44 | 11.1 | Analisi dei bisogni formativi |  | 6w | 2021-10-11 | 2021-11-19 | 35 | 95d | 0d | Wg 3 [500%] | 1200h | 48,000 | nov-21 |
| 45 | 11.2 | Svolgimento corsi di formazione |  | 4w | 2021-12-27 | 2022-01-21 | 44FS+5w | 95d | 0d | Wg 4 [1000%] | 1600h | 64,000 | gen-22 |
| 46 | 11.3 | Formazione interna completata | milestone | 0w | 2022-01-21 | 2022-01-21 | 45 | 95d |  |  |  |  |  |
| 47 | 12 | **Sviluppo Sito WEB** |  | 85d | 2021-10-11 | 2022-02-04 |  | 85d |  |  | 4400h | 176,000 | dic-21 |
| 48 | 12.1 | Back End |  | 12w | 2021-10-11 | 2021-12-31 | 29, 40 | 85d | 0d | Wg 3 [500%] | 2400h | 96,000 |  |
| 49 | 12.2 | Front End |  | 5w | 2022-01-03 | 2022-02-04 | 48 | 85d | 0d | Wg 3 [1000%] | 2000h | 80,000 |  |
| 50 | 12.3 | Sito WEB pubblicato | milestone | 0w | 2022-02-04 | 2022-02-04 | 49 | 85d |  |  |  |  |  |

| ID | WBS | Task | Type | Duration | Start | Finish | Predecessors | Total slack | Resources | Work | Cost | Target |
| --- | --- | --- | --- | --- | --- | --- | --- | --- | --- | --- | --- | --- |
| 51 | 13 | **Creazione del quadro per lo sviluppo del sistema** |  | 35d | 2021-09-06 | 2021-10-22 |  | 0d |  | 4920h | 252,000 | Secondo trimestre 2022 |
| 52 | 13.1 | Creazione di una bozza |  | 2w | 2021-09-06 | 2021-09-17 | 28, 19, 42 | 0d | DAFM [1000%]; Project Board [600%] | 1280h | 73,600 |  |
| 53 | 13.2 | Meeting con gli stakeholders |  | 1w | 2021-10-04 | 2021-10-08 | 52FS+2w | 0d | DAFM [1000%]; Wg 1 [900%]; Wg 2 [1100%]; Wg 3 [1000%]; Wg 4 [1000%]; Project Board [600%]; Business Analyst; Consulenti Esterni; Sponsor (o chi ne fa veci) | 2360h | 104,800 |  |
| 54 | 13.3 | Stesura ufficiale |  | 2w | 2021-10-11 | 2021-10-22 | 53 | 0d | DAFM [1000%]; Project Board [600%] | 1280h | 73,600 |  |
| 55 | 14 | Quadro del sistema creato | milestone | 0w | 2021-10-22 | 2021-10-22 | 54 | 160d |  |  |  |  |
| 56 | 15 | Elaborazione strategia forestale nazionale |  | 25d | 2021-10-25 | 2021-11-26 | 32FS+3w, 54 | 0d | Wg 2 [1100%] | 2200h | 88,000 | mag-22 |
| 57 | 16 | Strategia forestale nazionale definita | milestone | 0w | 2021-11-26 | 2021-11-26 | 56 | 135d |  |  |  |  |
| 58 | 17 | **Periodo di Test per verificare il raggiungimento dei KPI Target** |  | 70d | 2022-02-28 | 2022-06-03 |  | 0d |  | 560h | 37,600 | Maggio-Novembre 2022 |
| 59 | 17.1 | Analisi KPI a 3 mesi |  | 1w | 2022-02-28 | 2022-03-04 | 56FS+13w, 13 | 65d | Project Board [600%]; DAFM [1000%] | 280h | 18,800 |  |
| 60 | 17.2 | Analisi KPI a 6 mesi |  | 1w | 2022-05-30 | 2022-06-03 | 56FS+26w | 0d | Project Board [600%]; DAFM [1000%] | 280h | 18,800 |  |
| 61 | 17.3 | Processo di verifica approvato (Fine Progetto) | milestone | 0w | 2022-06-03 | 2022-06-03 | 60 | 0d |  |  |  |  |
